Schedule from MS Project, 2011-01-13 to 2012-01-26, A marks actual dates.

## Calendars

- Standard: Mon-Fri 08:00-12:00, 13:00-17:00; Sat-Sun off. Exceptions (off unless hours are given): 2011-05-30, 2011-07-04, 2011-09-05, 2011-10-10, 2011-11-24 to 2011-11-25, 2011-12-26, 2012-01-02.

## Resources

| Resource |
| --- |
| Prasad |
| Dan |
| Vijay |
| Xiaoling |
| Aynur |
| Greg |
| (Xiaoling) |
| Doc Team |

## Schedule

| ID | WBS | Task | Type | Duration | Start | Finish | Predecessors | Complete | Constraint | Resources | Work | Actual work |
| --- | --- | --- | --- | --- | --- | --- | --- | --- | --- | --- | --- | --- |
| 1 | 1 | **SDK 4.2.3** |  | 50.7d | 2011-03-15 A | 2011-05-24 A |  | 100% |  |  | 392h | 392h |
| 2 | 1.1 | GF 30729 Provide option to generate JUnit Tests for Logical Model Domain classes [already done] | milestone | 0d | 2011-03-15 A | 2011-03-15 A |  | 100% | start no earlier than 2011-03-15 |  |  |  |
| 3 | 1.2 | GF 30749 Third-Party Jars within the Code Generation Process |  | 5d | 2011-03-15 A | 2011-03-21 A |  | 100% | start no earlier than 2011-03-15 | Dan [75%] | 30h | 30h |
| 4 | 1.3 | GF 30753 Generation of the "not-null" Attribute with the "property" Element Node (not-null constraints) |  | 3d | 2011-03-30 A | 2011-04-01 A |  | 100% | start no earlier than 2011-03-30 | Vijay | 24h | 24h |
| 5 | 1.4 | GF 30748 Bi-directional self-associations |  | 5d | 2011-04-04 A | 2011-04-08 A |  | 100% | start no earlier than 2011-04-04 | Vijay | 40h | 40h |
| 6 | 1.5 | **GF 30510 Support (code generation) for interfaces** |  | 9d | 2011-03-30 A | 2011-04-11 A |  | 100% |  |  | 72h | 72h |
| 7 | 1.5.1 | Design |  | 2d | 2011-03-30 A | 2011-03-31 A |  | 100% | start no earlier than 2011-03-30 | Prasad | 16h | 16h |
| 8 | 1.5.2 | XMI Handler |  | 3d | 2011-04-01 A | 2011-04-05 A | 7 | 100% |  | Prasad | 24h | 24h |
| 9 | 1.5.3 | Code generation |  | 3d | 2011-04-06 A | 2011-04-08 A | 8 | 100% |  | Prasad | 24h | 24h |
| 10 | 1.5.4 | Test |  | 1d | 2011-04-11 A | 2011-04-11 A | 9 | 100% |  | Prasad | 8h | 8h |
| 11 | 1.6 | Dev testing and documentation |  | 4d | 2011-04-12 A | 2011-04-15 A | 2, 3, 4, 5, 10 | 100% |  | Prasad | 32h | 32h |
| 12 | 1.7 | Ivy support (XMI handler) |  | 2d | 2011-04-18 A | 2011-04-19 A | 11 | 100% |  | Prasad [25%] | 4h | 4h |
| 13 | 1.8 | QA test plan |  | 3d | 2011-04-14 A | 2011-04-18 A | 11FF | 100% | must start on 2011-04-14 | Xiaoling | 24h | 24h |
| 14 | 1.9 | QA |  | 9d | 2011-04-20 A | 2011-05-02 A | 12, 13 | 100% |  | Xiaoling | 72h | 72h |
| 15 | 1.10 | QA support |  | 7d | 2011-04-20 A | 2011-04-28 A | 14SS | 100% |  | Prasad [25%] | 14h | 14h |
| 16 | 1.11 | Optional QA for 30508, 30510, 30511, 30524 |  | 10d | 2011-05-09 A | 2011-05-24 A | 14 | 100% | start no earlier than 2011-05-09 | Xiaoling | 80h | 80h |
| 19 | 2 | **SDK 4.2.3 alternate database testing** |  | 18d? | 2011-06-08 A | 2011-07-01 A |  | 100% |  |  | 112h | 112h |
| 20 | 2.1 | Dev-supplied JUnits on Oracle |  | 2d | 2011-06-14 A | 2011-06-15 A |  | 100% | start no earlier than 2011-06-14 | Xiaoling | 16h | 16h |
| 21 | 2.2 | Smoke-test and 4.2.3 regression on Oracle |  | 3d | 2011-06-16 A | 2011-06-20 A | 20 | 100% |  | Xiaoling | 24h | 24h |
| 22 | 2.3 | Postgres installation issues |  | 5d? | 2011-06-08 A | 2011-06-14 A |  | 100% | start no earlier than 2011-06-08 |  |  |  |
| 23 | 2.4 | Build/deployment problems with Postgres |  | 2d | 2011-06-21 A | 2011-06-22 A | 22, 21 | 100% |  | Xiaoling | 16h | 16h |
| 24 | 2.5 | Dev-supplied JUnits on Postgres |  | 2d | 2011-06-23 A | 2011-06-24 A | 21, 23, 22 | 100% |  | Xiaoling | 16h | 16h |
| 25 | 2.6 | Smoke-test and 4.2.3 regression on Postgres |  | 5d | 2011-06-27 A | 2011-07-01 A | 24 | 100% |  | Xiaoling | 40h | 40h |
| 28 | 3 | **GF 31030 - CSM/UPT patch for EMMES (UPT-Tomcat support)** |  | 44d? | 2011-04-21 A | 2011-06-22 A |  | 100% |  |  | 149.46h | 149.46h |
| 29 | 3.1 | Installation instructions for Tomcat |  | 3d | 2011-04-21 A | 2011-05-04 A |  | 100% | start no earlier than 2011-04-21 | Prasad [75%] | 17.46h | 17.46h |
| 30 | 3.2 | UPT fixes |  | 6d | 2011-04-25 A | 2011-05-02 A |  | 100% | start no earlier than 2011-04-25 | Prasad [75%] | 36h | 36h |
| 31 | 3.3 | packaging |  | 1d | 2011-05-12 A | 2011-05-12 A | 30 | 100% | start no earlier than 2011-05-12 | Prasad | 8h | 8h |
| 32 | 3.4 | QA (limited to Tomcat and mySQL) |  | 7d | 2011-05-13 A | 2011-05-23 A | 31 | 100% | start no earlier than 2011-05-04 | Aynur | 56h | 56h |
| 33 | 3.5 | Release activities |  | 2d? | 2011-05-24 A | 2011-05-25 A | 32 | 100% |  | Prasad | 16h | 16h |

| ID | WBS | Task | Duration | Start | Finish | Predecessors | Complete | Remaining | Total slack | Constraint | Resources | Work | Actual work |
| --- | --- | --- | --- | --- | --- | --- | --- | --- | --- | --- | --- | --- | --- |
| 34 | 3.6 | **Alternate distribution packages** | 12d | 2011-06-07 A | 2011-06-22 A |  | 100% |  |  |  |  | 16h | 16h |
| 35 | 3.6.1 | Smoke-test GUI installer distribution | 4d | 2011-06-07 A | 2011-06-10 A |  | 100% |  |  | start no earlier than 2011-06-07 | Greg [25%] | 8h | 8h |
| 36 | 3.6.2 | Smoke-test upgrade distribution | 4d | 2011-06-15 A | 2011-06-22 A |  | 100% |  |  | start no earlier than 2011-06-15 | Greg [25%] | 8h | 8h |
| 39 | 4 | **Technology stack upgrade to 2011 "current" and "future"** | 168d? | 2011-05-13 A | 2012-01-13 |  | 80% | 33.98d? | 9d |  |  | 1352.4h | 1307.92h |
| 40 | 4.1 | CLM/LLT (base CLM only, CSM relies on CLM) | 1d | 2011-05-13 A | 2011-05-13 A |  | 100% |  |  | start no earlier than 2011-05-13 | Prasad | 8h | 8h |
| 41 | 4.2 | **CSM/UPT/CGMM** | 17d | 2011-05-16 A | 2011-06-08 A | 40 | 100% |  |  |  |  | 88h | 88h |
| 42 | 4.2.1 | JDK (migrate - done for a patch) | 1d | 2011-05-16 A | 2011-05-16 A |  | 100% |  |  | start no earlier than 2011-05-11 | Prasad | 8h | 8h |
| 43 | 4.2.2 | JBoss (migrate - done for a patch) | 1d | 2011-05-17 A | 2011-05-17 A | 42 | 100% |  |  |  | Prasad | 8h | 8h |
| 44 | 4.2.3 | UPT/Tomcat (migrate - in progress for a patch) | 1d | 2011-05-18 A | 2011-05-18 A | 43 | 100% |  |  |  | Prasad | 8h | 8h |
| 45 | 4.2.4 | Other | 2d | 2011-05-23 A | 2011-05-26 A | 44 | 100% |  |  | start no earlier than 2011-05-23 | Prasad | 16h | 16h |
| 46 | 4.2.5 | CGMM | 6d | 2011-06-01 A | 2011-06-08 A |  | 100% |  |  | start no earlier than 2011-06-01 | Prasad | 48h | 48h |
| 47 | 4.3 | CLM/LLT (LLT relies on CSM) | 2d | 2011-05-27 A | 2011-05-31 A | 41 | 100% |  |  |  | Prasad | 16h | 16h |
| 48 | 4.4 | XMI Handler (initial) | 2d | 2011-06-09 A | 2011-06-10 A |  | 100% |  |  | start no earlier than 2011-06-09 | Prasad [50%] | 8h | 8h |
| 49 | 4.5 | **SDK** | 15d | 2011-06-14 A | 2011-07-05 A | 48 | 100% |  |  |  |  | 72h | 72h |
| 50 | 4.5.1 | JDK | 1d | 2011-06-14 A | 2011-06-14 A |  | 100% |  |  | must start on 2011-06-14 | Prasad | 8h | 8h |
| 51 | 4.5.2 | Jboss | 1d | 2011-06-15 A | 2011-06-15 A | 50 | 100% |  |  |  | Prasad | 8h | 8h |
| 52 | 4.5.3 | Spring | 3d | 2011-06-22 A | 2011-06-24 A | 51 | 100% |  |  | must start on 2011-06-22 | Prasad [50%] | 12h | 12h |
| 53 | 4.5.4 | Hibernate | 2d | 2011-06-27 A | 2011-06-28 A | 52 | 100% |  |  |  | Prasad | 16h | 16h |
| 54 | 4.5.5 | Other technologies | 2d | 2011-06-29 A | 2011-06-30 A | 53 | 100% |  |  |  | Prasad [75%] | 12h | 12h |
| 55 | 4.5.6 | CQL->HQL workaround and Junit updates [aborted] | 2d | 2011-07-01 A | 2011-07-05 A | 54 | 100% |  |  | start no earlier than 2011-07-01 | Prasad | 16h | 16h |
| 56 | 4.6 | XMI Handler (formalized) | 1d? | 2011-07-06 A | 2011-07-06 A | 49 | 100% |  |  |  | Prasad | 8h | 8h |
| 57 | 4.7 | **Refocus from 2010 to 2011 "current" tech stack** | 4d | 2011-07-07 A | 2011-07-12 A |  | 100% |  |  |  |  | 32h | 32h |
| 58 | 4.7.1 | Re-version CLM API 4.2 to 4.1.1 | 1d | 2011-07-07 A | 2011-07-07 A |  | 100% |  |  | start no earlier than 2011-07-07 | Prasad | 8h | 8h |
| 59 | 4.7.2 | Re-version CSM 4.3 to 4.2.3 | 1d | 2011-07-08 A | 2011-07-08 A | 58 | 100% |  |  | start no earlier than 2011-07-08 | Prasad | 8h | 8h |
| 60 | 4.7.3 | Apply tech upgrades against SDK 4.4 to make 4.4.1 | 1.5d | 2011-07-11 A | 2011-07-12 A | 58 | 100% |  |  | start no earlier than 2011-07-11 | Prasad | 12h | 12h |
| 61 | 4.7.4 | Re-version CLM LLT 4.2 to 4.1.1 | 0.5d | 2011-07-12 A | 2011-07-12 A | 60 | 100% |  |  | start no earlier than 2011-07-12 | Prasad | 4h | 4h |

| ID | WBS | Task | Type | Duration | Start | Finish | Predecessors | Complete | Constraint | Resources | Work | Actual work |
| --- | --- | --- | --- | --- | --- | --- | --- | --- | --- | --- | --- | --- |
| 62 | 4.8 | **2011 "future"** |  | 23d | 2011-08-24 A | 2011-09-26 A | 212 | 100% | start no earlier than 2011-08-02 |  | 82h | 82h |
| 63 | 4.8.1 | CSM 4.2.4 (Spring/Struts/Ant) |  | 3d | 2011-08-24 A | 2011-08-26 A |  | 100% | start no earlier than 2011-08-24 | Prasad [75%] | 18h | 18h |
| 64 | 4.8.2 | CSM 4.2.4 - add backward compatibility fixes made in 4.2.3 |  | 2d | 2011-09-12 A | 2011-09-13 A | 63, 81 | 100% | start no earlier than 2011-09-12 | Prasad [50%] | 8h | 8h |
| 65 | 4.8.3 | **SDK 4.5** |  | 19d | 2011-08-29 A | 2011-09-23 A |  | 100% |  |  | 48h | 48h |
| 66 | 4.8.3.1 | Merge 4.2.3 enhancements into 4.5 |  | 6d | 2011-08-29 A | 2011-09-06 A |  | 100% | start no earlier than 2011-08-29 | Dan [25%] | 12h | 12h |
| 67 | 4.8.3.2 | Sprint, Struts, Ant upgrades |  | 4d | 2011-09-06 A | 2011-09-09 A |  | 100% | start no earlier than 2011-09-06 | Prasad [50%] | 16h | 16h |
| 68 | 4.8.3.3 | Update CQL-related Junits and re-run all Junits |  | 5d | 2011-09-12 A | 2011-09-16 A |  | 100% | start no earlier than 2011-09-12 | Dan [25%] | 10h | 10h |
| 69 | 4.8.3.4 | JUnits - automation failing for XML data tests w/ ISO |  | 5d | 2011-09-19 A | 2011-09-23 A |  | 100% | start no earlier than 2011-09-19 | Dan [25%] | 10h | 10h |
| 70 | 4.8.4 | CLM 4.1.2 (Spring/Struts/Ant) |  | 1d | 2011-09-26 A | 2011-09-26 A | 65, 72 | 100% | start no earlier than 2011-09-15 | Prasad | 8h | 8h |
| 71 | 4.9 | Workbench - test/review of versions and requirements |  | 3d | 2011-08-31 A | 2011-09-02 A |  | 100% | start no earlier than 2011-08-31 | Greg [25%] | 6h | 6h |
| 72 | 4.10 | Workbench 4.4.1 (supports 4.4.1 and 4.5) |  | 5d | 2011-09-14 A | 2011-09-20 A |  | 100% | start no earlier than 2011-09-14 | Prasad [50%] | 20h | 20h |
| 73 | 4.11 | **QA 2010 "current" [stopped]** |  | 8d | 2011-06-27 A | 2011-07-07 A |  | 100% |  |  | 80h | 80h |
| 74 | 4.11.1 | CLM/CSM [stopped] |  | 8d | 2011-06-27 A | 2011-07-07 A | 47 | 100% | start no earlier than 2011-06-27 | Aynur | 64h | 64h |
| 75 | 4.11.2 | SDK [stopped] |  | 2d | 2011-07-06 A | 2011-07-07 A | 49 | 100% | start no earlier than 2011-07-05 | Xiaoling | 16h | 16h |
| 76 | 4.12 | SDK 4.4.1 and CSM 4.2.3 bug fixes |  | 5d | 2011-07-18 A | 2011-07-22 A |  | 100% | start no earlier than 2011-07-18 | Prasad [75%] | 30h | 30h |
| 77 | 4.13 | QA support and minor bug fixes (2011 "current") |  | 11d | 2011-07-18 A | 2011-08-01 A |  | 100% | start no earlier than 2011-07-18 | Prasad [25%] | 22h | 22h |
| 78 | 4.14 | QA support and minor bug fixes (2011 "current") |  | 14d | 2011-08-02 A | 2011-08-23 A |  | 100% | start no earlier than 2011-08-02 | Prasad | 112h | 112h |
| 79 | 4.15 | QA support and minor bug fixes (2011 "current") |  | 8d | 2011-08-24 A | 2011-09-02 A |  | 100% | start no earlier than 2011-08-24 | Prasad [25%] | 16h | 16h |
| 80 | 4.16 | QA support (2011 "current") |  | 14d | 2011-09-06 A | 2011-09-23 A |  | 100% | start no earlier than 2011-09-06 | Prasad [50%] | 56h | 56h |
| 81 | 4.17 | testing and fixes for backward compatibility in CSM 4.2.3 |  | 5d | 2011-08-29 A | 2011-09-02 A |  | 100% | start no earlier than 2011-08-29 | Prasad [75%] | 30h | 30h |
| 82 | 4.18 | template investigation (SDK-705 and SDK-1354) |  | 3d | 2011-08-25 A | 2011-08-29 A |  | 100% | start no earlier than 2011-08-25 | Greg [50%] | 12h | 12h |
| 83 | 4.19 | CSM 4.2.3 - smoketest alternate distribution packages [stopped] |  | 3d | 2011-09-21 A | 2011-09-23 A |  | 100% | start no earlier than 2011-09-21 | Greg [20%] | 4.8h | 4.8h |
| 84 | 4.20 | CSM 4.2.4 - smoketest alternate distribution packages [dropped] | milestone | 0d | 2011-09-27 A | 2011-09-27 A | 83 | 100% | start no earlier than 2011-09-27 |  |  |  |
| 85 | 4.21 | **QA 2011 "current" [stopped]** |  | 40d? | 2011-07-11 A | 2011-09-02 A |  | 100% |  |  | 564h | 564h |
| 86 | 4.21.1 | **CSM 4.2.3** |  | 40d | 2011-07-11 A | 2011-09-02 A | 59 | 100% |  |  | 280h | 280h |
| 87 | 4.21.1.1 | set-up and 1st round |  | 6d | 2011-07-11 A | 2011-07-18 A | 59 | 100% |  | Aynur | 48h | 48h |
| 88 | 4.21.1.2 | update test cases (as needed) |  | 1d | 2011-07-19 A | 2011-07-19 A | 59 | 100% | start no earlier than 2011-07-19 | Aynur | 8h | 8h |
| 89 | 4.21.1.3 | UPT regression - mySQL |  | 6d | 2011-07-20 A | 2011-07-27 A |  | 100% | start no earlier than 2011-07-20 | Aynur | 48h | 48h |
| 90 | 4.21.1.4 | deployment testing - Oracle and PostgreSQL |  | 2d | 2011-07-28 A | 2011-07-29 A |  | 100% | start no earlier than 2011-07-28 | Aynur | 16h | 16h |
| 91 | 4.21.1.5 | UPT regression - Oracle |  | 4d | 2011-08-01 A | 2011-08-04 A | 90 | 100% |  | Aynur | 32h | 32h |
| 92 | 4.21.1.6 | instance level security |  | 5d | 2011-08-05 A | 2011-08-11 A | 91 | 100% |  | Aynur | 40h | 40h |
| 93 | 4.21.1.7 | UPT regression - PostgreSQL |  | 4d | 2011-08-12 A | 2011-08-17 A | 92 | 100% |  | Aynur | 32h | 32h |
| 94 | 4.21.1.8 | API testing [stopped] |  | 7d | 2011-08-18 A | 2011-09-02 A | 93 | 100% | start no earlier than 2011-08-18 | Aynur | 56h | 56h |

| ID | WBS | Task | Type | Duration | Start | Finish | Predecessors | Complete | Remaining | Total slack | Free slack | Constraint | Resources | Work | Actual work |
| --- | --- | --- | --- | --- | --- | --- | --- | --- | --- | --- | --- | --- | --- | --- | --- |
| 95 | 4.21.2 | **SDK 4.4.1** |  | 38.5d? | 2011-07-12 A | 2011-09-02 A |  | 100% |  |  |  |  |  | 284h | 284h |
| 96 | 4.21.2.1 | set-up and initial tests |  | 3.5d | 2011-07-12 A | 2011-07-15 A | 60 | 100% |  |  |  |  | Xiaoling | 28h | 28h |
| 97 | 4.21.2.2 | Oracle database including junit tests |  | 8d | 2011-07-18 A | 2011-07-27 A | 96 | 100% |  |  |  |  | Xiaoling | 64h | 64h |
| 98 | 4.21.2.3 | Tomcat 6.0.20 with database Oracle and MySQL, Junit tests |  | 6d | 2011-07-28 A | 2011-08-04 A | 97 | 100% |  |  |  |  | Xiaoling | 48h | 48h |
| 99 | 4.21.2.4 | jboss 5.1.0 with database Oracle and MySQL, Junit tests |  | 2d | 2011-08-05 A | 2011-08-08 A | 98 | 100% |  |  |  |  | Xiaoling | 16h | 16h |
| 100 | 4.21.2.5 | post-fix retests and backward compatibility tests |  | 4d | 2011-08-09 A | 2011-08-12 A | 99 | 100% |  |  |  |  | Xiaoling | 32h | 32h |
| 101 | 4.21.2.6 | Tomcat and Jboss with PostgreSQL database and Junit tests [split] |  | 3d | 2011-08-15 A | 2011-08-17 A | 100 | 100% |  |  |  |  | Xiaoling | 24h | 24h |
| 102 | 4.21.2.7 | PostgreSQL availability and issues (?) |  | 13d? | 2011-08-08 A | 2011-08-24 A |  | 100% |  |  |  | start no earlier than 2011-08-08 |  |  |  |
| 103 | 4.21.2.8 | verification of Grid authentication fix |  | 2d | 2011-08-18 A | 2011-08-19 A |  | 100% |  |  |  | start no earlier than 2011-08-18 | Xiaoling | 16h | 16h |
| 104 | 4.21.2.9 | Tomcat and Jboss with PostgreSQL database and Junit tests |  | 4d | 2011-08-25 A | 2011-08-30 A | 102 | 100% |  |  |  | start no earlier than 2011-08-25 | Xiaoling | 32h | 32h |
| 105 | 4.21.2.10 | adding and modifying *.java test cases in Junit, local-client, and remote client for Writable API; |  | 3d | 2011-08-31 A | 2011-09-02 A | 104 | 100% |  |  |  | start no earlier than 2011-08-02 | Xiaoling | 24h | 24h |
| 106 | 4.22 | UPT automation support |  | 1d | 2011-11-04 A | 2011-11-04 A |  | 100% |  |  |  | start no earlier than 2011-11-04 | Prasad | 8h | 8h |
| 107 | 4.23 | QA |  | 25d | 2011-11-21 | 2011-12-28 |  |  |  | 9d | 0d | start no earlier than 2011-11-21 |  |  |  |
| 108 | 4.24 | **(QA support)** |  | 31d? | 2011-11-29 A | 2012-01-12 | 107SS | 68% | 9.77d? | 10d |  |  |  | 69.6h | 33.12h |
| 109 | 4.24.1 | General support |  | 27d | 2011-12-05 A | 2012-01-12 |  | 80% | 5.4d | 10d |  | start no earlier than 2011-12-05 | Prasad [15%] | 32.4h | 25.92h |
| 110 | 4.24.2 | QA - UPT installation |  | 1d | 2011-11-29 A | 2011-11-29 A |  | 100% |  |  |  | start no earlier than 2011-11-29 | Dan [75%]; Greg [15%] | 7.2h | 7.2h |
| 111 | 4.24.3 | JBoss automated deployments on RHEL 5 server |  | 5d? | 2012-01-05 | 2012-01-11 |  |  |  | 0d |  | must start on 2012-01-05 | Prasad [75%] | 30h |  |
| 112 | 4.25 | SDK 4.5 documentation updates (REST enhancements and 4.2.3 features) |  | 1d? | 2011-11-21 | 2011-11-21 |  |  |  | 35d | 24d | start no earlier than 2011-11-21 | Doc Team | 8h |  |
| 113 | 4.26 | **Release activities** |  | 11d? | 2011-12-29 | 2012-01-13 | 107 |  |  | 9d |  |  |  |  |  |
| 114 | 4.26.1 | Final tag and repository updates with smoke tests |  | 1d | 2011-12-29 | 2011-12-29 |  |  |  | 9d | 0d | start no earlier than 2011-11-21 |  |  |  |
| 115 | 4.26.2 | QA report and sign-off |  | 1d | 2011-12-30 | 2011-12-30 | 114 |  |  | 9d | 0d | start no earlier than 2011-11-21 |  |  |  |
| 116 | 4.26.3 | User documentation publication |  | 5d | 2011-12-29 | 2012-01-05 | 112 |  |  | 11d | 2d | start no earlier than 2011-11-21 |  |  |  |
| 117 | 4.26.4 | Wiki page updates |  | 1d | 2011-12-29 | 2011-12-29 |  |  |  | 15d | 6d | start no earlier than 2011-11-21 |  |  |  |
| 118 | 4.26.5 | Software bundle created (zip file) |  | 1d | 2012-01-03 | 2012-01-03 | 115 |  |  | 9d | 0d | start no earlier than 2011-11-21 |  |  |  |
| 119 | 4.26.6 | GForge website updated (upload software bundle, release notes, documentation) |  | 1d | 2012-01-04 | 2012-01-04 | 118 |  |  | 9d | 0d | start no earlier than 2011-11-21 |  |  |  |
| 120 | 4.26.7 | Workbench deployment on stage and production |  | 5d | 2012-01-03 | 2012-01-09 | 115 |  |  | 9d | 0d | start no earlier than 2011-11-21 |  |  |  |
| 121 | 4.26.8 | Javadocs deployment |  | 3d | 2012-01-03 | 2012-01-05 | 115 |  |  | 11d | 2d | start no earlier than 2011-11-21 |  |  |  |
| 122 | 4.26.9 | NCICB website updates (including Download Center) |  | 3d | 2012-01-05 | 2012-01-09 | 119 |  |  | 9d | 0d | start no earlier than 2011-11-21 |  |  |  |
| 123 | 4.26.10 | Release notes posted |  | 1d | 2011-12-29 | 2011-12-29 |  |  |  | 18d | 9d | start no earlier than 2011-11-21 |  |  |  |
| 124 | 4.26.11 | Buffer |  | 3d | 2012-01-10 | 2012-01-12 | 116, 117, 118, 119, 120, 121, 122, 123FF |  |  | 9d | 0d | start no earlier than 2011-11-21 |  |  |  |
| 125 | 4.26.12 | Release announcement |  | 1d? | 2012-01-13 | 2012-01-13 | 124 |  |  | 9d | 0d | start no earlier than 2011-12-05 |  |  |  |
| 126 | 4.26.13 | CLM 4.1.1 Released | milestone | 0d | 2012-01-13 | 2012-01-13 | 125 |  |  | 9d |  | start no earlier than 2011-12-05 |  |  |  |
| 127 | 4.26.14 | CLM 4.1.2 Released | milestone | 0d | 2012-01-13 | 2012-01-13 | 125 |  |  | 9d |  | start no earlier than 2011-12-05 |  |  |  |
| 128 | 4.26.15 | CSM 4.2.3 Released | milestone | 0d | 2012-01-13 | 2012-01-13 | 125 |  |  | 9d |  | start no earlier than 2011-12-05 |  |  |  |
| 129 | 4.26.16 | CSM 4.2.4 Released | milestone | 0d | 2012-01-13 | 2012-01-13 | 125 |  |  | 9d |  | start no earlier than 2011-12-05 |  |  |  |
| 130 | 4.26.17 | SDK 4.4.1 Released | milestone | 0d | 2012-01-13 | 2012-01-13 | 125 |  |  | 9d |  | start no earlier than 2011-12-05 |  |  |  |
| 131 | 4.26.18 | SDK 4.5 Released | milestone | 0d | 2012-01-13 | 2012-01-13 | 125 |  |  | 9d |  | start no earlier than 2011-12-05 |  |  |  |
| 132 | 4.26.19 | Workbench 4.4.1 Released | milestone | 0d | 2012-01-13 | 2012-01-13 | 125 |  |  | 9d |  | start no earlier than 2011-12-05 |  |  |  |

| ID | WBS | Task | Type | Duration | Start | Finish | Predecessors | Complete | Remaining | Total slack | Constraint | Resources | Work | Actual work |
| --- | --- | --- | --- | --- | --- | --- | --- | --- | --- | --- | --- | --- | --- | --- |
| 135 | 5 | **Ivy/Maven migration and BDA removal** |  | 14d? | 2011-10-04 A | 2011-10-24 |  | 86% | 2d? | 64d |  |  | 80h | 80h |
| 136 | 5.1 | Remove BDA dependencies - CSM 4.2.4 |  | 4d | 2011-10-04 A | 2011-10-07 A |  | 100% |  |  | start no earlier than 2011-10-04 | Prasad [50%] | 16h | 16h |
| 137 | 5.2 | Repository migration - CSM 4.2.4 |  | 1d | 2011-10-11 A | 2011-10-11 A |  | 100% |  |  | start no earlier than 2011-10-11 | Prasad | 8h | 8h |
| 138 | 5.3 | Repository and BDA - CSM 4.2.3 |  | 1d | 2011-10-12 A | 2011-10-12 A | 136, 137 | 100% |  |  | start no earlier than 2011-10-11 | Prasad | 8h | 8h |
| 139 | 5.4 | Repository and BDA - SDK 4.4.1 & 4.5 |  | 2d | 2011-10-13 A | 2011-10-14 A | 138 | 100% |  |  | start no earlier than 2011-10-11 | Prasad | 16h | 16h |
| 140 | 5.5 | Repository and BDA - Workbench 4.4.1 |  | 2d | 2011-10-18 A | 2011-10-19 A | 139 | 100% |  |  | start no earlier than 2011-10-18 | Prasad | 16h | 16h |
| 141 | 5.6 | Repository and BDA - Workbench 4.5 (for future release) |  | 1d | 2011-10-21 A | 2011-10-21 A |  | 100% |  |  | start no earlier than 2011-10-21 | Prasad | 8h | 8h |
| 142 | 5.7 | Repository and BDA - CLM/LLT |  | 1d | 2011-10-24 A | 2011-10-24 A |  | 100% |  |  | start no earlier than 2011-10-24 | Prasad | 8h | 8h |
| 143 | 5.8 | additional modifications to pending releases (?) |  | 1d? | 2011-10-04 | 2011-10-04 |  |  |  | 77d | start no earlier than 2011-10-04 |  |  |  |
| 144 | 5.9 | Repository and BDA - ISO 21090 library |  | 1d? | 2011-10-24 | 2011-10-24 |  |  |  | 64d | start no earlier than 2011-10-24 |  |  |  |
| 147 | 6 | **REST API analysis and implementation** |  | 87d | 2011-09-21 A | 2012-01-26 |  | 88% | 10.55d | 0d |  |  | 162h | 138h |
| 148 | 6.1 | REST support - servlet vs JAXrs document |  | 3d | 2011-09-21 A | 2011-09-23 A |  | 100% |  |  | start no earlier than 2011-09-20 | Prasad [50%] | 12h | 12h |
| 149 | 6.2 | REST support - servlet vs JAXrs document - review and updates |  | 1d | 2011-09-27 A | 2011-09-27 A | 148 | 100% |  |  | start no earlier than 2011-09-27 | Prasad | 8h | 8h |
| 150 | 6.3 | Requirements discussions |  | 5d | 2011-09-26 A | 2011-09-30 A |  | 100% |  |  | start no earlier than 2011-09-26 | Greg [10%] | 4h | 4h |
| 151 | 6.4 | JAX-RS Jersey vs Apache CXF comparison (test implementations) |  | 4d | 2011-09-28 A | 2011-10-03 A | 150 | 100% |  |  |  | Prasad | 32h | 32h |
| 152 | 6.5 | Document current state vs. and path towards "real" REST |  | 4d | 2011-10-04 A | 2011-10-07 A | 151 | 100% |  |  |  | Prasad [50%] | 16h | 16h |
| 153 | 6.6 | "real" REST implementation in SDK 4.5 (w/o Junits) |  | 7d | 2011-10-25 A | 2011-11-18 A | 150, 142 | 100% |  |  |  | Prasad | 56h | 56h |
| 154 | 6.7 | JAXB stream bug investigation (affects REST implementation) |  | 5d | 2011-10-31 A | 2011-11-04 A |  | 100% |  |  | start no earlier than 2011-10-31 | Dan [25%] | 10h | 10h |
| 155 | 6.8 | real REST implementation in SDK 4.5 - Junits |  | 4d | 2012-01-23 | 2012-01-26 | 166 |  |  | 0d | start no earlier than 2012-01-16 | Prasad [75%] | 24h |  |
| 158 | 7 | **Section 508 compliance** |  | 61d? | 2011-10-28 A | 2012-01-26 |  | 49% | 31.1d? | 0d |  |  | 230.4h | 96.4h |
| 159 | 7.1 | (WAVE-based analysis and fixes for SDK 4.5 UI done under earlier work) | milestone | 0d | 2011-10-28 A | 2011-10-28 A |  | 100% |  |  | start no earlier than 2011-10-28 |  |  |  |
| 160 | 7.2 | Manual and WAVE analysis of UPT (checklist/report) |  | 9d | 2011-11-07 A | 2011-11-17 A |  | 100% |  |  | start no earlier than 2011-11-07 | Dan [15%] | 10.8h | 10.8h |
| 161 | 7.3 | Manual analysis of SDK (checklist/report) |  | 3d | 2011-12-12 A | 2011-12-14 A |  | 100% |  |  | start no earlier than 2011-12-12 | Dan [25%] | 6h | 6h |
| 162 | 7.4 | Investigate SDK compliance issues (primarily tree control) |  | 2d | 2011-12-15 A | 2011-12-16 A | 161 | 100% |  |  |  | Dan [35%] | 5.6h | 5.6h |
| 163 | 7.5 | Apply proposed compliance changes to CSM/UPT 4.2.3 and 4.2.4 |  | 8d | 2011-12-12 A | 2011-12-21 A |  | 100% |  |  | start no earlier than 2011-12-12 | Prasad [75%]; Greg [25%] | 64h | 64h |
| 164 | 7.6 | UPT compliance re-check |  | 2d | 2011-12-22 A | 2011-12-23 A | 163 | 100% |  |  |  | Dan [50%] | 8h | 8h |
| 165 | 7.7 | SDK compliance estimates |  | 1d | 2012-01-04 A | 2012-01-04 A |  | 100% |  |  | start no earlier than 2012-01-04 | Dan [25%] | 2h | 2h |
| 166 | 7.8 | SDK compliance improvements |  | 7d? | 2012-01-12 | 2012-01-20 | 165 |  |  | 0d | start no earlier than 2012-01-12 | Prasad [75%] | 42h |  |
| 167 | 7.9 | Manual analysis of Workbench ? |  | 3d | 2012-01-16 | 2012-01-18 |  |  |  | 0d | start no earlier than 2012-01-16 |  |  |  |

| ID | WBS | Task | Duration | Start | Finish | Predecessors | Complete | Remaining | Total slack | Free slack | Constraint | Resources | Work | Actual work |
| --- | --- | --- | --- | --- | --- | --- | --- | --- | --- | --- | --- | --- | --- | --- |
| 168 | 7.10 | **Review collateral (readme, installer, etc.)** | 6d | 2012-01-19 | 2012-01-26 | 167 |  |  | 0d |  |  |  | 12h |  |
| 169 | 7.10.1 | CSM | 2d | 2012-01-19 | 2012-01-20 |  |  |  | 0d |  | start no earlier than 2011-11-21 | Dan [25%] | 4h |  |
| 170 | 7.10.2 | SDK | 2d | 2012-01-23 | 2012-01-24 | 169 |  |  | 0d |  | start no earlier than 2011-11-21 | Dan [25%] | 4h |  |
| 171 | 7.10.3 | CLM | 2d | 2012-01-25 | 2012-01-26 | 170 |  |  | 0d |  | start no earlier than 2011-11-21 | Dan [25%] | 4h |  |
| 172 | 7.11 | Convert CSM manual to WIKI | 10d | 2011-12-19 | 2012-01-03 |  |  |  | 17d |  | start no earlier than 2011-12-19 | Doc Team | 80h |  |
| 175 | 8 | **UPT Improvement Plan** | 171d? | 2011-03-14 A | 2011-11-11 A |  | 100% |  |  |  |  |  | 109.2h | 109.2h |
| 176 | 8.1 | Analysis of existing trackers | 6d | 2011-03-14 A | 2011-03-21 A |  | 100% |  |  |  | start no earlier than 2011-03-14 | Prasad | 48h | 48h |
| 177 | 8.2 | Requirements gathering with NBIA | 20d? | 2011-03-28 A | 2011-04-22 A |  | 100% |  |  |  | start no earlier than 2011-03-28 |  |  |  |
| 178 | 8.3 | Draft project plan development (partial) | 2d | 2011-05-13 A | 2011-05-16 A | 176, 177FF | 100% |  |  |  | start no earlier than 2011-05-13 |  |  |  |
| 179 | 8.4 | Internal review of proposed features | 0.25d | 2011-05-27 A | 2011-05-27 A | 178 | 100% |  |  |  | start no earlier than 2011-05-27 |  |  |  |
| 180 | 8.5 | **Research on use of systems-hosted older versions [incomplete]** | 50d? | 2011-06-13 A | 2011-08-22 A | 179 | 100% |  |  |  |  |  | 24h | 24h |
| 181 | 8.5.1 | Formulate initial query | 1d | 2011-06-13 A | 2011-06-13 A |  | 100% |  |  |  | start no earlier than 2011-06-13 | Greg [25%] | 2h | 2h |
| 182 | 8.5.2 | Lead time and systems response (est.) | 10d? | 2011-06-14 A | 2011-06-27 A | 181 | 100% |  |  |  |  |  |  |  |
| 183 | 8.5.3 | Formulate subsequent queries | 6d | 2011-06-28 A | 2011-07-06 A | 182 | 100% |  |  |  |  | Greg [25%] | 12h | 12h |
| 184 | 8.5.4 | Lead time and systems response (est.) | 5d? | 2011-07-07 A | 2011-07-13 A | 183 | 100% |  |  |  |  |  |  |  |
| 185 | 8.5.5 | Determine why subsequent queries returned no results and re-submit [incomplete] | 5d | 2011-08-02 A | 2011-08-22 A |  | 100% |  |  |  | start no earlier than 2011-08-02 | Greg [25%] | 10h | 10h |
| 186 | 8.6 | Initial task sheet (TRB presentation prep) | 5d | 2011-10-03 A | 2011-10-07 A |  | 100% |  |  |  | start no earlier than 2011-10-03 | Greg [25%] | 10h | 10h |
| 187 | 8.7 | Revised task sheet (TRB presentation prep) | 1d | 2011-10-20 A | 2011-10-20 A |  | 100% |  |  |  | start no earlier than 2011-10-20 | Prasad | 8h | 8h |
| 188 | 8.8 | Revised task sheet (TRB presentation prep) | 4d | 2011-10-17 A | 2011-10-20 A | 180 | 100% |  |  |  | start no earlier than 2011-10-17 | Greg [20%] | 6.4h | 6.4h |
| 189 | 8.9 | High level project plan | 5d | 2011-10-24 A | 2011-10-28 A | 188 | 100% |  |  |  | start no earlier than 2011-10-24 | Greg [10%] | 4h | 4h |
| 190 | 8.10 | Updated plan (work w/ QA on estimates, possible Jan release) [stopped] | 3d | 2011-11-03 A | 2011-11-07 A | 189 | 100% |  |  |  | start no earlier than 2011-11-03 | Greg [10%] | 2.4h | 2.4h |
| 191 | 8.11 | QA support and planning meetings | 3d | 2011-11-08 A | 2011-11-10 A |  | 100% |  |  |  | start no earlier than 2011-11-08 | Greg [10%] | 2.4h | 2.4h |
| 192 | 8.12 | Updated plan (no QA or release, with smaller tasks and tracker nos.) [incomplete] | 2d | 2011-11-10 A | 2011-11-11 A |  | 100% |  |  |  | start no earlier than 2011-11-10 | Greg [25%] | 4h | 4h |
| 195 | 9 | **XMI Handler** | 12d? | 2011-08-17 A | 2011-09-01 |  | 17% | 10d? | 99d |  |  |  | 4h | 4h |
| 196 | 9.1 | Test use of new XMI Handler modeling features with SIW and document results [stopped] | 2d | 2011-08-17 A | 2011-08-18 A |  | 100% |  |  |  | start no earlier than 2011-08-17 | Greg [25%] | 4h | 4h |
| 197 | 9.2 | Coordinate official 1.1 release | 5d? | 2011-08-19 | 2011-08-25 | 196 |  |  | 99d | 0d | start no earlier than 2011-06-29 |  |  |  |
| 198 | 9.3 | Coordinate 1.2 release (tech stack upgrade)? | 5d? | 2011-08-26 | 2011-09-01 | 56, 197 |  |  | 99d |  | start no earlier than 2011-06-30 |  |  |  |

| ID | WBS | Task | Duration | Start | Finish | Predecessors | Complete | Constraint | Resources | Work | Actual work |
| --- | --- | --- | --- | --- | --- | --- | --- | --- | --- | --- | --- |
| 201 | 10 | **Analysis** | 199d? | 2011-03-22 A | 2012-01-04 A |  | 100% |  |  | 386.8h | 386.8h |
| 202 | 10.1 | **older completed tasks** | 93d | 2011-03-22 A | 2011-08-01 A |  | 100% |  |  | 216h | 216h |
| 203 | 10.1.1 | Eclipse/SDK comparison and gap analysis | 5d | 2011-03-22 A | 2011-03-28 A |  | 100% | start no earlier than 2011-03-22 | Prasad | 40h | 40h |
| 204 | 10.1.2 | User requirements/need for SDK (combined with Eclipse/SDK analysis) | 3d | 2011-04-15 A | 2011-04-19 A |  | 100% | start no earlier than 2011-04-15 | Prasad [75%] | 18h | 18h |
| 205 | 10.1.3 | caGrid with JBoss 5.1 | 3d | 2011-05-05 A | 2011-05-12 A |  | 100% | start no earlier than 2011-05-05 | Prasad | 24h | 24h |
| 206 | 10.1.4 | Ideal architecture for separation of SDK and caGrid [incomplete, deferred indefinitely] | 2d | 2011-06-09 A | 2011-06-10 A |  | 100% | start no earlier than 2011-06-09 | Prasad [50%] | 8h | 8h |
| 207 | 10.1.5 | Test Globus WSRF (caGrid) and JBoss 5.1 | 1d | 2011-06-13 A | 2011-06-13 A |  | 100% | start no earlier than 2011-06-13 | Prasad | 8h | 8h |
| 208 | 10.1.6 | Evaluate caTissue source with respect to potential use of SDK | 3d | 2011-06-16 A | 2011-06-20 A |  | 100% | start no earlier than 2011-06-16 | Prasad | 24h | 24h |
| 209 | 10.1.7 | Review and revise caTissue/SDK analysis | 1d | 2011-06-21 A | 2011-06-21 A | 208 | 100% |  | Prasad | 8h | 8h |
| 210 | 10.1.8 | caTissue Jamboree | 3d | 2011-06-22 A | 2011-06-24 A |  | 100% | finish no earlier than 2011-06-24 | Prasad [50%] | 12h | 12h |
| 211 | 10.1.9 | NBIA security discussion on federated grid credentials | 2d | 2011-06-29 A | 2011-06-30 A |  | 100% | start no earlier than 2011-06-29 | Prasad [25%] | 4h | 4h |
| 212 | 10.1.10 | ISO/SDK use - examples and presentation | 3d | 2011-07-13 A | 2011-07-15 A |  | 100% | start no earlier than 2011-07-13 | Prasad | 24h | 24h |
| 213 | 10.1.11 | SDK capabilities documentation & presentation support | 2d | 2011-07-25 A | 2011-07-26 A |  | 100% | start no earlier than 2011-07-25 | Prasad [75%] | 12h | 12h |
| 214 | 10.1.12 | ISO/SDK use - examples and presentation (revisited) | 4d | 2011-07-27 A | 2011-08-01 A |  | 100% | start no earlier than 2011-07-27 | Prasad [75%] | 24h | 24h |
| 215 | 10.1.13 | Investigate problem with caGrid-flavored CQL and SDK 4.4 w/ ISO data types despite workaround [canceled] | 5d | 2011-07-18 A | 2011-07-22 A |  | 100% | start no earlier than 2011-07-18 | Dan [25%] | 10h | 10h |
| 216 | 10.2 | IVY repository use and transition to Maven - investigation | 4d | 2011-09-15 A | 2011-09-20 A |  | 100% | start no earlier than 2011-09-15 | Greg [20%] | 6.4h | 6.4h |
| 217 | 10.3 | 508 compliance reviews [incomplete - moved to new section] | 20d? | 2011-09-26 A | 2011-10-28 A |  | 100% | start no earlier than 2011-09-26 | Dan [25%] | 40h | 40h |
| 218 | 10.4 | 508 compliance review process | 4d | 2011-10-11 A | 2011-10-14 A |  | 100% | start no earlier than 2011-10-11 | Greg [10%] | 3.2h | 3.2h |
| 219 | 10.5 | Technology stack guidance on vendor/tech neutrality - analysis and outline | 3d | 2011-11-01 A | 2011-11-03 A |  | 100% | start no earlier than 2011-11-01 | Prasad; Greg [25%] | 28.8h | 28.8h |
| 220 | 10.6 | Technology stack guidance on vendor/tech neutrality - document | 8d | 2011-11-07 A | 2011-11-16 A | 219 | 100% | start no earlier than 2011-11-07 | Prasad | 64h | 64h |
| 221 | 10.7 | Technology stack guidance on vendor/tech neutrality - document | 3d | 2011-11-16 A | 2011-11-18 A |  | 100% | start no earlier than 2011-11-16 | Greg [25%] | 6h | 6h |
| 222 | 10.8 | NCCCP Data Curation Tool review and estimates | 4d | 2011-12-22 A | 2011-12-28 A |  | 100% | start no earlier than 2011-12-22 | Prasad [35%] | 11.2h | 11.2h |
| 223 | 10.9 | Security SDK vulnerability & UPT estimates | 4d | 2011-12-29 A | 2012-01-04 A |  | 100% | start no earlier than 2011-12-29 | Prasad [35%] | 11.2h | 11.2h |
| 226 | 11 | **CSM bug fixes (code - no release specified)** | 6d | 2011-03-14 A | 2011-03-21 A |  | 100% |  |  | 48h | 48h |
| 227 | 11.1 | GF 29450 CSM – Users locked out due to invalid logins may be (effectively) locked out forever | 5d | 2011-03-14 A | 2011-03-18 A |  | 100% | start no earlier than 2011-03-14 | Vijay | 40h | 40h |
| 228 | 11.2 | GF 30372 CSM/UPT - Change UPT install.properties file to note properties that must be replaced | 1d | 2011-03-21 A | 2011-03-21 A |  | 100% | start no earlier than 2011-03-21 | Vijay | 8h | 8h |

| ID | WBS | Task | Type | Duration | Start | Finish | Predecessors | Complete | Remaining | Total slack | Free slack | Constraint | Resources | Work | Actual work |
| --- | --- | --- | --- | --- | --- | --- | --- | --- | --- | --- | --- | --- | --- | --- | --- |
| 231 | 12 | **SDK 4.1.3 - GF 27529 patch to 4.1.2 (for caBIO)** |  | 0d | 2011-03-14 A | 2011-03-14 |  |  | 0d | 221d |  |  |  |  |  |
| 232 | 12.1 | apply fix for GF 27529 to 4.1.2 [already done] | milestone | 0d | 2011-03-14 A | 2011-03-14 A |  | 100% |  |  |  | start no earlier than 2011-03-14 |  |  |  |
| 233 | 12.2 | QA [low priority] [deferred indefinitely] | milestone | 0d | 2011-03-14 | 2011-03-14 | 232 |  |  | 221d | 0d | start no earlier than 2011-02-17 |  |  |  |
| 234 | 12.3 | Gforge post [no longer applicable] | milestone | 0d | 2011-03-14 | 2011-03-14 | 233 |  |  | 221d |  |  |  |  |  |
| 237 | 13 | **General support to date (only large tasks called out)** |  | 209d? | 2011-03-22 A | 2012-01-18 |  | 93% | 14.87d? | 6d |  |  |  | 425.73h | 401.73h |
| 238 | 13.1 | **older completed tasks** |  | 178d | 2011-03-22 A | 2011-12-02 A |  | 100% |  |  |  |  |  | 321.33h | 321.33h |
| 239 | 13.1.1 | General support through 6/3 |  | 53d | 2011-03-22 A | 2011-06-03 A |  | 100% |  |  |  | finish no earlier than 2011-06-03 | Dan [25%] | 106h | 106h |
| 240 | 13.1.2 | General support 6/6-6/10 |  | 5d | 2011-06-06 A | 2011-06-10 A |  | 100% |  |  |  | start no earlier than 2011-06-06 | Dan [25%] | 10h | 10h |
| 241 | 13.1.3 | General support 6/13-6/17 |  | 5d | 2011-06-13 A | 2011-06-17 A |  | 100% |  |  |  | start no earlier than 2011-06-13 | Dan [15%] | 6h | 6h |
| 242 | 13.1.4 | General support 6/20-6/24 |  | 5d | 2011-06-20 A | 2011-06-24 A |  | 100% |  |  |  | start no earlier than 2011-06-20 | Dan [15%] | 6h | 6h |
| 243 | 13.1.5 | General support 6/27-7/1 |  | 5d | 2011-06-27 A | 2011-07-01 A |  | 100% |  |  |  | start no earlier than 2011-06-27 | Dan [35%] | 14h | 14h |
| 244 | 13.1.6 | General support 7/5-7/8 |  | 4d | 2011-07-05 A | 2011-07-08 A |  | 100% |  |  |  | start no earlier than 2011-07-05 | Dan [15%] | 4.8h | 4.8h |
| 245 | 13.1.7 | General support 7/11-7/15 |  | 5d | 2011-07-11 A | 2011-07-15 A |  | 100% |  |  |  | start no earlier than 2011-07-11 | Dan [5%] | 2h | 2h |
| 246 | 13.1.8 | caTissue |  | 6d | 2011-07-11 A | 2011-07-18 A |  | 100% |  |  |  | start no earlier than 2011-07-11 | Greg [25%] | 12h | 12h |
| 247 | 13.1.9 | General support 7/18-7/23 |  | 5d | 2011-07-18 A | 2011-07-22 A |  | 100% |  |  |  | start no earlier than 2011-07-18 | Dan [10%] | 4h | 4h |
| 248 | 13.1.10 | 508 remediation (manual tests) for hosted UPT |  | 3d | 2011-07-20 A | 2011-07-22 A |  | 100% |  |  |  | start no earlier than 2011-07-20 | Greg [25%] | 6h | 6h |
| 249 | 13.1.11 | General support 7/25-7/29 |  | 5d | 2011-07-25 A | 2011-07-29 A |  | 100% |  |  |  | start no earlier than 2011-07-25 | Dan [15%] | 6h | 6h |
| 250 | 13.1.12 | caTissue (caGrid/SDK integration) |  | 4d | 2011-07-25 A | 2011-07-29 A |  | 100% |  |  |  | start no earlier than 2011-07-25 | Greg [25%] | 8h | 8h |
| 251 | 13.1.13 | General support 8/1-8/5 |  | 5d | 2011-08-01 A | 2011-08-05 A |  | 100% |  |  |  | start no earlier than 2011-08-01 | Dan [10%] | 4h | 4h |
| 252 | 13.1.14 | General support 8/8-8/12 |  | 5d | 2011-08-08 A | 2011-08-12 A |  | 100% |  |  |  | start no earlier than 2011-08-08 | Dan [10%] | 4h | 4h |
| 253 | 13.1.15 | CLOB modeling |  | 1d | 2011-08-12 A | 2011-08-12 A |  | 100% |  |  |  | start no earlier than 2011-08-12 | Prasad | 8h | 8h |
| 254 | 13.1.16 | General support 8/15-8/19 |  | 5d | 2011-08-15 A | 2011-08-19 A |  | 100% |  |  |  | start no earlier than 2011-08-15 | Dan [10%] | 4h | 4h |
| 255 | 13.1.17 | CSM connection pooling |  | 1d | 2011-08-16 A | 2011-08-16 A |  | 100% |  |  |  | start no earlier than 2011-08-16 | Prasad | 8h | 8h |
| 256 | 13.1.18 | General support 8/22-8/26 |  | 5d | 2011-08-22 A | 2011-08-26 A |  | 100% |  |  |  | start no earlier than 2011-08-22 | Dan [15%] | 6h | 6h |
| 257 | 13.1.19 | General support 8/29-9/2 |  | 5d | 2011-08-29 A | 2011-09-02 A |  | 100% |  |  |  | start no earlier than 2011-08-29 | Dan [10%] | 4h | 4h |
| 258 | 13.1.20 | General support 9/6-9/9 |  | 4d | 2011-09-06 A | 2011-09-09 A |  | 100% |  |  |  | start no earlier than 2011-09-06 | Greg [30%] | 9.6h | 9.6h |
| 259 | 13.1.21 | General support 9/12-9/16 |  | 5d | 2011-09-12 A | 2011-09-16 A |  | 100% |  |  |  | start no earlier than 2011-09-12 | Greg [10%] | 4h | 4h |
| 260 | 13.1.22 | caArray/UPT issues with user-created groups (follow-up expected) |  | 3d | 2011-09-12 A | 2011-09-14 A |  | 100% |  |  |  | start no earlier than 2011-09-12 | Greg [20%] | 4.8h | 4.8h |
| 261 | 13.1.23 | General support 9/19-9/23 |  | 5d | 2011-09-19 A | 2011-09-23 A |  | 100% |  |  |  | start no earlier than 2011-09-19 | Greg [10%] | 4h | 4h |
| 262 | 13.1.24 | General support 9/26-9/30 |  | 5d | 2011-09-26 A | 2011-09-30 A |  | 100% |  |  |  | start no earlier than 2011-09-26 | Greg [10%] | 4h | 4h |
| 263 | 13.1.25 | General support 10/3-10/7 |  | 5d | 2011-10-03 A | 2011-10-07 A |  | 100% |  |  |  | start no earlier than 2011-09-26 |  |  |  |
| 264 | 13.1.26 | General support 10/11-10/14 |  | 4d | 2011-10-11 A | 2011-10-14 A |  | 100% |  |  |  | start no earlier than 2011-10-11 | Dan [25%]; Greg [20%] | 8.53h | 8.53h |
| 265 | 13.1.27 | SOAP UI utility for CTRP QA |  | 1d | 2011-10-17 A | 2011-10-17 A |  | 100% |  |  |  | start no earlier than 2011-10-17 | Prasad | 8h | 8h |
| 266 | 13.1.28 | General support 10/17-10/21 |  | 5d | 2011-10-17 A | 2011-10-21 A |  | 100% |  |  |  | start no earlier than 2011-10-17 | Greg [10%] | 4h | 4h |
| 267 | 13.1.29 | General support 10/24-10/28 |  | 5d | 2011-10-24 A | 2011-10-28 A |  | 100% |  |  |  | start no earlier than 2011-10-24 | Greg [10%] | 4h | 4h |
| 268 | 13.1.30 | General support 10/31-11/4 |  | 5d | 2011-10-31 A | 2011-11-04 A |  | 100% |  |  |  | start no earlier than 2011-10-31 |  |  |  |
| 269 | 13.1.31 | General support 11/7-11/11 |  | 5d | 2011-11-07 A | 2011-11-11 A |  | 100% |  |  |  | must start on 2011-11-07 |  |  |  |
| 270 | 13.1.32 | General support 11/14-11/18 |  | 5d | 2011-11-14 A | 2011-11-18 A |  | 100% |  |  |  | start no earlier than 2011-11-14 | Greg [10%]; Dan [10%] | 8h | 8h |
| 271 | 13.1.33 | General support 11/21-11/23 |  | 3d | 2011-11-21 A | 2011-11-23 A |  | 100% |  |  |  | start no earlier than 2011-11-21 | Dan [25%]; Greg [40%] | 15.6h | 15.6h |
| 272 | 13.1.34 | General support 11/28-12/2 |  | 5d | 2011-11-28 A | 2011-12-02 A |  | 100% |  |  |  | start no earlier than 2011-11-28 |  |  |  |
| 273 | 13.1.35 | caTissue support 11/28-12/2 |  | 5d | 2011-11-28 A | 2011-12-02 A |  | 100% |  |  |  | start no earlier than 2011-11-28 | Dan [25%]; Greg [35%] | 24h | 24h |
| 274 | 13.2 | General support 12/5-12/9 |  | 5d | 2011-12-05 A | 2011-12-09 A |  | 100% |  |  |  | start no earlier than 2011-12-05 | Prasad [25%] | 10h | 10h |
| 275 | 13.3 | ApplicationService discussion/document |  | 5d | 2011-12-05 A | 2011-12-09 A |  | 100% |  |  |  | start no earlier than 2011-12-05 | Prasad [60%]; Dan [25%]; Greg [15%] | 40h | 40h |
| 276 | 13.4 | General support 12/12-12/16 |  | 5d | 2011-12-12 A | 2011-12-16 A |  | 100% |  |  |  | start no earlier than 2011-12-12 | Prasad [10%] | 4h | 4h |
| 277 | 13.5 | General support 12/19-12/23 |  | 5d | 2011-12-19 A | 2011-12-23 A |  | 100% |  |  |  | start no earlier than 2011-12-19 |  |  |  |
| 278 | 13.6 | General support 12/27-12/30 |  | 4d | 2011-12-27 A | 2011-12-30 A |  | 100% |  |  |  | start no earlier than 2011-12-27 |  |  |  |
| 279 | 13.7 | Patch scripts for repository migrations for released SDK versions - protoype 4.2 |  | 5d | 2011-12-22 A | 2011-12-29 A |  | 100% |  |  |  | start no earlier than 2011-12-22 | Prasad [50%] | 20h | 20h |
| 280 | 13.8 | General support 1/3-1/6 |  | 4d | 2012-01-03 A | 2012-01-06 A |  | 100% |  |  |  | start no earlier than 2012-01-03 | Prasad [10%]; Greg [10%] | 6.4h | 6.4h |
| 281 | 13.9 | General support 1/9-1/13 |  | 5d | 2012-01-09 | 2012-01-13 |  |  |  | 9d |  | start no earlier than 2012-01-09 | Prasad [10%] | 4h |  |
| 282 | 13.10 | Patch scripts for repository migrations for released SDK versions |  | 10d? | 2012-01-05 | 2012-01-18 | 279 |  |  | 6d |  | start no earlier than 2012-01-05 | Dan [25%] | 20h |  |
| 283 | 13.11 | Convert doc links from Gforge to JIRA |  | 3d? | 2012-01-03 | 2012-01-05 |  |  |  | 15d |  | start no earlier than 2012-01-03 |  |  |  |

| ID | WBS | Task | Duration | Start | Finish | Complete | Remaining | Total slack | Constraint | Resources | Work | Actual work |
| --- | --- | --- | --- | --- | --- | --- | --- | --- | --- | --- | --- | --- |
| 286 | 14 | **Project Management to date (only large tasks called out)** | 212d | 2011-03-14 A | 2012-01-13 | 93% | 15.35d | 9d |  |  | 553.2h | 516.4h |
| 287 | 14.1 | **older completed tasks** | 184d | 2011-03-14 A | 2011-12-02 A | 100% |  |  |  |  | 465.2h | 465.2h |
| 288 | 14.1.1 | PM and misc work through 6/3 | 59d | 2011-03-14 A | 2011-06-03 A | 100% |  |  | finish no earlier than 2011-06-03 | Greg [50%] | 236h | 236h |
| 289 | 14.1.2 | General PM 6/6-6/10 | 5d | 2011-06-06 A | 2011-06-10 A | 100% |  |  | start no earlier than 2011-06-06 | Greg [25%] | 10h | 10h |
| 290 | 14.1.3 | General PM 6/13-6/17 | 5d | 2011-06-13 A | 2011-06-17 A | 100% |  |  | start no earlier than 2011-06-13 | Greg [25%] | 10h | 10h |
| 291 | 14.1.4 | Update project management plan | 2d | 2011-06-22 A | 2011-06-23 A | 100% |  |  | start no earlier than 2011-06-22 | Greg [50%] | 8h | 8h |
| 292 | 14.1.5 | General PM 6/23-6/24 | 2d | 2011-06-23 A | 2011-06-24 A | 100% |  |  | start no earlier than 2011-06-23 | Greg [25%] | 4h | 4h |
| 293 | 14.1.6 | General PM 6/27-7/1 | 5d | 2011-06-27 A | 2011-07-01 A | 100% |  |  | start no earlier than 2011-06-27 | Greg [25%] | 10h | 10h |
| 294 | 14.1.7 | General PM 7/5-7/8 | 4d | 2011-07-05 A | 2011-07-08 A | 100% |  |  | start no earlier than 2011-07-05 | Greg [25%] | 8h | 8h |
| 295 | 14.1.8 | General PM 7/11-7/15 | 5d | 2011-07-11 A | 2011-07-15 A | 100% |  |  | start no earlier than 2011-07-11 | Greg [25%] | 10h | 10h |
| 296 | 14.1.9 | General PM 7/18-7/23 | 5d | 2011-07-18 A | 2011-07-22 A | 100% |  |  | start no earlier than 2011-07-18 | Greg [25%] | 10h | 10h |
| 297 | 14.1.10 | General PM 7/25-7/29 | 4d | 2011-07-25 A | 2011-07-29 A | 100% |  |  | start no earlier than 2011-07-25 | Greg [25%] | 8h | 8h |
| 298 | 14.1.11 | General PM 8/1-8/4 | 4d | 2011-08-01 A | 2011-08-04 A | 100% |  |  | start no earlier than 2011-08-01 | Greg [25%] | 8h | 8h |
| 299 | 14.1.12 | General PM 8/15-8/19 | 5d | 2011-08-15 A | 2011-08-19 A | 100% |  |  | start no earlier than 2011-08-15 | Greg [35%] | 14h | 14h |
| 300 | 14.1.13 | General PM 8/22-8/26 | 5d | 2011-08-22 A | 2011-08-26 A | 100% |  |  | finish no earlier than 2011-08-26 | Greg [25%] | 10h | 10h |
| 301 | 14.1.14 | General PM 8/29-9/2 | 5d | 2011-08-29 A | 2011-09-02 A | 100% |  |  | start no earlier than 2011-08-29 | Greg [25%] | 10h | 10h |
| 302 | 14.1.15 | General PM 9/6-9/9 | 4d | 2011-09-06 A | 2011-09-09 A | 100% |  |  | start no earlier than 2011-09-06 | Greg [20%] | 6.4h | 6.4h |
| 303 | 14.1.16 | General PM 9/12-9/16 | 5d | 2011-09-12 A | 2011-09-16 A | 100% |  |  | start no earlier than 2011-09-12 | Greg [20%] | 8h | 8h |
| 304 | 14.1.17 | General PM 9/19-9/23 | 5d | 2011-09-19 A | 2011-09-23 A | 100% |  |  | start no earlier than 2011-09-19 | Greg [20%] | 8h | 8h |
| 305 | 14.1.18 | General PM 9/26-9/30 | 5d | 2011-09-26 A | 2011-09-30 A | 100% |  |  | start no earlier than 2011-09-26 | Greg [30%] | 12h | 12h |
| 306 | 14.1.19 | General PM 10/3-10/7 | 5d | 2011-10-03 A | 2011-10-07 A | 100% |  |  | start no earlier than 2011-10-03 | Greg [25%] | 10h | 10h |
| 307 | 14.1.20 | General PM 10/11-10/14 | 4d | 2011-10-11 A | 2011-10-14 A | 100% |  |  | start no earlier than 2011-10-11 | Greg [20%] | 6.4h | 6.4h |
| 308 | 14.1.21 | General PM 10/17-10/21 | 5d | 2011-10-17 A | 2011-10-21 A | 100% |  |  | start no earlier than 2011-10-17 | Greg [20%] | 8h | 8h |
| 309 | 14.1.22 | General PM 10/24-10/28 | 5d | 2011-10-24 A | 2011-10-28 A | 100% |  |  | start no earlier than 2011-10-24 | Greg [30%] | 12h | 12h |
| 310 | 14.1.23 | General PM 10/31-11/4 | 5d | 2011-10-31 A | 2011-11-04 A | 100% |  |  | start no earlier than 2011-10-31 | Greg [30%] | 12h | 12h |
| 311 | 14.1.24 | General PM 11/7-11/11 | 5d | 2011-11-07 A | 2011-11-11 A | 100% |  |  | start no earlier than 2011-11-07 | Greg [25%] | 10h | 10h |
| 312 | 14.1.25 | General PM 11/14-11/18 | 5d | 2011-11-14 A | 2011-11-18 A | 100% |  |  | start no earlier than 2011-11-14 | Greg [20%] | 8h | 8h |
| 313 | 14.1.26 | General PM 11/21-11/23 | 3d | 2011-11-21 A | 2011-11-23 A | 100% |  |  | start no earlier than 2011-11-21 | Greg [10%] | 2.4h | 2.4h |
| 314 | 14.1.27 | General PM 11/28-12/2 | 5d | 2011-11-28 A | 2011-12-02 A | 100% |  |  | start no earlier than 2011-11-28 | Greg [15%] | 6h | 6h |
| 315 | 14.2 | Research trackers by CBIIT project | 2d | 2011-12-02 A | 2011-12-05 A | 100% |  |  | start no earlier than 2011-12-02 | Greg [50%] | 8h | 8h |
| 316 | 14.3 | General PM 12/5-12/9 | 5d | 2011-12-05 A | 2011-12-09 A | 100% |  |  | start no earlier than 2011-12-05 | Greg [20%] | 8h | 8h |
| 317 | 14.4 | General PM 12/12-12/16 | 5d | 2011-12-12 A | 2011-12-16 A | 100% |  |  | start no earlier than 2011-12-12 | Greg [20%] | 8h | 8h |
| 318 | 14.5 | General PM 12/19-12/23 | 5d | 2011-12-19 A | 2011-12-23 A | 100% |  |  | start no earlier than 2011-12-19 | Greg [20%] | 8h | 8h |
| 319 | 14.6 | General PM 12/27-12/30 | 4d | 2011-12-27 A | 2011-12-30 A | 100% |  |  | start no earlier than 2011-12-27 | Greg [20%] | 6.4h | 6.4h |
| 320 | 14.7 | General PM 1/3-1/6 | 4d | 2012-01-03 A | 2012-01-06 A | 100% |  |  | start no earlier than 2012-01-03 | Greg [20%] | 6.4h | 6.4h |
| 321 | 14.8 | caCORE Tools Project Info spreadsheet | 4d | 2012-01-03 A | 2012-01-06 A | 100% |  |  | start no earlier than 2012-01-03 | Greg [20%] | 6.4h | 6.4h |
| 322 | 14.9 | General PM 1/9-1/13 | 5d | 2012-01-09 | 2012-01-13 |  |  | 9d | start no earlier than 2012-01-09 | Greg [15%] | 6h |  |
| 323 | 14.10 | Project Summary Report | 11d | 2011-12-22 | 2012-01-13 |  |  | 9d | start no earlier than 2011-12-22 | Greg [35%] | 30.8h |  |

| ID | WBS | Task | Duration | Start | Finish | Total slack | Constraint |
| --- | --- | --- | --- | --- | --- | --- | --- |
| 326 | 15 | **Other unplanned** | 1d? | 2011-01-13 | 2011-01-13 | 262d |  |
| 327 | 15.1 | ECCF compliance review and plan | 1d? | 2011-01-13 | 2011-01-13 | 262d | start no earlier than 2011-01-13 |
| 328 | 15.2 | Effect of NCI CBIIT’s Enterprise Security Program on CSM | 1d? | 2011-01-13 | 2011-01-13 | 262d | start no earlier than 2011-01-13 |
| 329 | 15.3 | Effect of NCI CBIIT’s Enterprise Security Program on CLM | 1d? | 2011-01-13 | 2011-01-13 | 262d | start no earlier than 2011-01-13 |
| 330 | 15.4 | Requirements documents - derived from user docs, existing reqs docs, and test cases (?) | 1d? | 2011-01-13 | 2011-01-13 | 262d | start no earlier than 2011-01-13 |
| 331 | 15.5 | caArray/UPT DB investigation (?) | 1d? | 2011-01-13 | 2011-01-13 | 262d | start no earlier than 2011-01-13 |
| 332 | 15.6 | Ideal architecture for separation of SDK and caGrid | 1d? | 2011-01-13 | 2011-01-13 | 262d | start no earlier than 2011-01-13 |
| 333 | 15.7 | Write SDK product support FAQ’s and post on KC | 1d? | 2011-01-13 | 2011-01-13 | 262d | start no earlier than 2011-01-13 |
| 334 | 15.8 | Write CSM product support FAQ’s and post on KC | 1d? | 2011-01-13 | 2011-01-13 | 262d | start no earlier than 2011-01-13 |
| 335 | 15.9 | Document migration activities/issues moving from SDK 4.0 to 4.4 (using caDSR as an example) | 1d? | 2011-01-13 | 2011-01-13 | 262d | start no earlier than 2011-01-13 |
| 336 | 15.10 | Feasibility analysis of providing semantic information (metadata) with data | 1d? | 2011-01-13 | 2011-01-13 | 262d | start no earlier than 2011-01-13 |
| 337 | 15.11 | REST support for non-SDK applications - research | 1d? | 2011-01-13 | 2011-01-13 | 262d | start no earlier than 2011-01-13 |
